# Appyco - Software Development Plan

Schedule from MS Project, 2016-07-21 to 2016-12-16, A marks actual dates.

## Calendars

- Standard: Mon-Fri 08:00-12:00, 13:00-17:00; Sat-Sun off. Exceptions (off unless hours are given): 2016-08-21 08:00-12:00, 13:00-17:00.

## Resources

| Resource |
| --- |
| Management |
| Project Manager |
| Analyst |
| Developer |
| Testers |
| Trainers |
| Technical Communicators |
| Deployment Team |

## Schedule

| ID | WBS | Task | Type | Duration | Start | Finish | Predecessors | Complete | Remaining | Total slack | Free slack | Resources | Work | Actual work |
| --- | --- | --- | --- | --- | --- | --- | --- | --- | --- | --- | --- | --- | --- | --- |
| 1 | 1 | Initiation | manual | 7d | 2016-07-21 A | 2016-07-29 A |  | 100% |  |  |  | Project Manager | 56h | 56h |
| 2 | 2 | Analysis, Planning |  | 7d | 2016-08-01 A | 2016-08-09 A | 1 | 100% |  |  |  | Analyst | 56h | 56h |
| 3 | 3 | Requirement Specs |  | 8.33d | 2016-08-10 A | 2016-08-21 A | 2 | 100% |  |  |  | Project Manager | 66.67h | 66.67h |
| 4 | 4 | System Design |  | 18.67d | 2016-08-21 A | 2016-09-14 A | 3 | 100% |  |  |  | Developer; Project Manager | 298.67h | 298.67h |
| 5 | 5 | **Development** |  | 74.66d | 2016-08-21 A | 2016-12-01 | 4 | 18% | 61.59d |  |  | Developer | 3379.2h | 462h |
| 6 | 5.1 | **User experience** |  | 16.33d | 2016-08-21 A | 2016-09-12 A |  | 100% |  |  |  | Developer | 350h | 350h |
| 7 | 5.1.1 | Photo capture |  | 11.09d | 2016-08-21 A | 2016-09-05 A |  | 100% |  |  |  | Developer | 88.72h | 88.72h |
| 8 | 5.1.2 | Photo Filtering |  | 10.5d | 2016-08-21 A | 2016-09-02 A |  | 100% |  |  |  | Developer | 84h | 84h |
| 9 | 5.1.3 | Photo Sharing |  | 5.83d | 2016-09-02 A | 2016-09-12 A | 8 | 100% |  |  |  | Developer | 46.64h | 46.64h |
| 10 | 5.2 | **Image Processing** |  | 17.79d | 2016-09-12 A | 2016-10-06 |  | 39% | 10.79d | 0d |  | Developer | 284.64h | 112h |
| 11 | 5.2.1 | Filter Optimization |  | 7d | 2016-09-12 A | 2016-09-21 A | 7, 9 | 100% |  |  |  | Developer | 56h | 56h |
| 12 | 5.2.2 | Intellgent Filtering |  | 10.79d | 2016-09-21 | 2016-10-06 | 11 |  |  | 0d |  | Developer | 86.32h |  |
| 13 | 5.3 | **Cloud Services** |  | 36.46d | 2016-09-21 | 2016-11-10 |  |  |  | 0d |  | Developer | 1744.4h |  |
| 14 | 5.3.1 | Photo Syncing |  | 15.75d | 2016-10-06 | 2016-10-27 | 12 |  |  | 0d |  | Developer | 126h |  |
| 15 | 5.3.2 | **Facebook Intergration** |  | 29.17d | 2016-09-21 | 2016-11-01 |  |  |  | 5.83d |  | Developer | 599.68h |  |
| 16 | 5.3.2.1 | Setup Facebook intergration |  | 12.54d | 2016-09-21 | 2016-10-07 | 11 |  |  | 5.83d | 0d | Developer | 100.32h |  |
| 17 | 5.3.2.2 | Intergrate with OS sharing language |  | 8.46d | 2016-10-07 | 2016-10-20 | 16 |  |  | 5.83d | 0d | Developer | 67.68h |  |
| 18 | 5.3.2.3 | Scipts defaults faccebook langulage |  | 7.29d | 2016-10-07 | 2016-10-19 | 16 |  |  | 5.84d | 0d | Developer | 58.32h |  |
| 19 | 5.3.2.4 | Write code passing file to sharing funcs |  | 8.17d | 2016-10-20 | 2016-11-01 | 17 |  |  | 5.83d | 3d | Developer | 65.36h |  |
| 20 | 5.3.2.5 | Customize sharing UI match app UX |  | 9.33d | 2016-10-19 | 2016-11-01 | 18 |  |  | 5.84d | 3.01d | Developer | 74.64h |  |
| 21 | 5.3.3 | **Twitter Intergration** |  | 32.17d | 2016-09-21 | 2016-11-04 |  |  |  | 2.83d |  | Developer | 647.68h |  |
| 22 | 5.3.3.1 | Setup Twitter intergration |  | 15.54d | 2016-09-21 | 2016-10-12 | 11 |  |  | 2.83d | 0d | Developer | 124.32h |  |
| 23 | 5.3.3.2 | Intergrate with OS sharing funcs |  | 8.46d | 2016-10-12 | 2016-10-25 | 22 |  |  | 2.83d | 0d | Developer | 67.68h |  |
| 24 | 5.3.3.3 | Scripts defaults facebook language |  | 7.29d | 2016-10-12 | 2016-10-24 | 22 |  |  | 2.84d | 0d | Developer | 58.32h |  |
| 25 | 5.3.3.4 | 3.3.4. Write code passing file to sharinh funcs |  | 8.17d | 2016-10-25 | 2016-11-04 | 23 |  |  | 2.83d | 0d | Developer | 65.36h |  |
| 26 | 5.3.3.5 | Customize sharing UI match app UX |  | 9.33d | 2016-10-24 | 2016-11-04 | 24 |  |  | 2.84d | 0.01d | Developer | 74.64h |  |
| 27 | 5.3.4 | Appic social |  | 9.92d | 2016-10-27 | 2016-11-10 | 14 |  |  | 0d |  | Developer | 79.36h |  |

| ID | WBS | Task | Type | Duration | Start | Finish | Predecessors | Total slack | Free slack | Resources | Work |
| --- | --- | --- | --- | --- | --- | --- | --- | --- | --- | --- | --- |
| 28 | 5.4 | **Ardroid Programming** |  | 19.16d | 2016-11-04 | 2016-12-01 |  | 0d |  | Developer | 402.88h |
| 29 | 5.4.1 | Camera Ultization |  | 9.33d | 2016-11-10 | 2016-11-24 | 27 | 0d |  | Developer | 74.64h |
| 30 | 5.4.2 | OS-version suport |  | 8.46d | 2016-11-04 | 2016-11-16 | 19, 20, 25, 26 | 2.83d | 0d | Developer | 67.68h |
| 31 | 5.4.3 | NFC photosharing |  | 5.54d | 2016-11-24 | 2016-12-01 | 29 | 0d |  | Developer | 44.32h |
| 32 | 5.4.4 | Device compatilitity |  | 7.87d | 2016-11-16 | 2016-11-28 | 30 | 2.83d |  | Developer | 62.96h |
| 33 | 6 | Tesing |  | 7d | 2016-12-01 | 2016-12-12 | 5 | 0d |  | Testers | 56h |
| 34 | 7 | Delivery |  | 3.5d | 2016-12-12 | 2016-12-16 | 33 | 0d |  | Deployment Team; Project Manager | 56h |
| 35 | 8 | Support | milestone | 0d | 2016-12-16 | 2016-12-16 | 34 | 0d |  | Technical Communicators |  |
